# Diagrama de Gantt

How a schedule from MS Project changed from version to version. A marks actual dates.

## Version 1 (saved 2019-04-27)

Note of the change: Docs: Se agrega el archivo Diagrama de gantt.mpp

| ID | WBS | Task | Duration | Start | Finish | Predecessors | Total float |
| --- | --- | --- | --- | --- | --- | --- | --- |
| 1 | 1 | **Proyecto** | 305d | 2018-10-15 | 2019-12-13 |  | 0d |
| 2 | 1.1 | **Análisis y Planeación** | 45d | 2018-10-15 | 2018-12-14 |  | 0d |
| 3 |  | Programación estructurada | 4d | 2018-10-15 | 2018-10-18 |  | 0d |
| 4 |  | Levantamiento de información | 4d | 2018-10-19 | 2018-10-24 | 3 | 0d |
| 5 |  | Aplicación de técnica de levantamiento de información | 5d | 2018-10-25 | 2018-10-31 | 4 | 0d |
| 6 |  | Análisis de la información | 5d | 2018-11-01 | 2018-11-07 | 5 | 0d |
| 7 | 1.1.5 | **Componente Metodológico** | 27d | 2018-11-08 | 2018-12-14 | 6 | 0d |
| 8 |  | Nombre del proyecto | 4d | 2018-11-08 | 2018-11-13 |  | 0d |
| 9 |  | Objetivo General | 5d | 2018-11-14 | 2018-11-20 | 8 | 0d |
| 10 |  | Objetivo Específicos | 5d | 2018-11-21 | 2018-11-27 | 9 | 0d |
| 11 |  | Planteamiento del Problema | 6d | 2018-11-28 | 2018-12-05 | 10 | 0d |
| 12 |  | Alcance del proyecto | 4d | 2018-12-06 | 2018-12-11 | 11 | 0d |
| 13 |  | Justificación | 3d | 2018-12-12 | 2018-12-14 | 12 | 0d |
| 14 |  | Receso | 35d | 2018-12-17 | 2019-02-01 | 7 | 0d |
| 15 | 1.3 | **Diseño** | 50d | 2019-02-04 | 2019-04-12 | 14 | 0d |
| 16 |  | Requerimientos Funcionales | 5d | 2019-02-04 | 2019-02-08 |  | 0d |
| 17 |  | Requerimientos No Funcionales | 5d | 2019-02-11 | 2019-02-15 | 16 | 0d |
| 18 |  | BPMN | 5d | 2019-02-18 | 2019-02-22 | 17 | 0d |
| 19 |  | Modelo Entidad Relación | 5d | 2019-02-25 | 2019-03-01 | 18 | 0d |
| 20 |  | Diagrama de Entidad y Relación | 10d | 2019-03-04 | 2019-03-15 | 19 | 0d |
| 21 |  | Diagramas UML | 5d | 2019-03-18 | 2019-03-22 | 20 | 0d |
| 22 |  | Normalización de bases de datos | 5d | 2019-03-25 | 2019-03-29 | 21 | 0d |
| 23 |  | Prototipos y Mockup | 10d | 2019-04-01 | 2019-04-12 | 22 | 0d |
| 24 |  | Semana santa | 11d | 2019-04-15 | 2019-04-29 | 23 | 0d |
| 25 | 1.5 | **Desarrollo Etapa 1** | 23d | 2019-04-30 | 2019-05-30 | 24 | 0d |
| 26 |  | Base de datos | 6d | 2019-04-30 | 2019-05-07 |  | 0d |
| 27 |  | Construcción de la Base de Datos | 6d | 2019-05-08 | 2019-05-15 | 26 | 0d |
| 28 |  | Datos insertados en la Base de Datos | 6d | 2019-05-16 | 2019-05-23 | 27 | 0d |
| 29 |  | Consultas y Join en la Base y Datos | 5d | 2019-05-24 | 2019-05-30 | 28 | 0d |
| 30 |  | Receso | 21d | 2019-05-31 | 2019-06-28 | 29 | 0d |
| 31 | 1.7 | **Desarrollo Etapa 2** | 30d | 2019-07-01 | 2019-08-09 | 30 | 0d |
| 32 |  | Codificación y CRUD | 10d | 2019-07-01 | 2019-07-12 |  | 0d |
| 33 |  | Conexión de base de datos | 10d | 2019-07-15 | 2019-07-26 | 32 | 0d |
| 34 |  | CRUD Funcional módulos del sistema | 10d | 2019-07-29 | 2019-08-09 | 33 | 0d |
| 35 | 1.8 | **Prueba de Software** | 40d | 2019-08-12 | 2019-10-04 | 34 | 0d |
| 36 |  | Prueba de caja negra | 10d | 2019-08-12 | 2019-08-23 |  | 0d |
| 37 |  | prueba de caja blanca | 10d | 2019-08-26 | 2019-09-06 | 36 | 0d |
| 38 |  | prueba de estrés | 10d | 2019-09-09 | 2019-09-20 | 37 | 0d |
| 39 |  | prueba de unitaria | 10d | 2019-09-23 | 2019-10-04 | 38 | 0d |
| 40 | 1.9 | **Modelo De Calidad** | 50d | 2019-10-07 | 2019-12-13 | 39 | 0d |
| 41 |  | Formatos de calidad | 10d | 2019-10-07 | 2019-10-18 |  | 0d |
| 42 |  | Elaboración de contratos | 10d | 2019-10-21 | 2019-11-01 | 41 | 0d |
| 43 |  | Construcción de calidad de usuario y operación | 30d | 2019-11-04 | 2019-12-13 | 42 | 0d |

## Version 2 (saved 2019-04-28)

Note of the change: Docs: Se modifica el archivos Diagrama de Gantt

Last finish 2019-12-13 → 2019-12-03 (-10d).

Changed:

| ID | Task | Start | Finish | Duration |
| --- | --- | --- | --- | --- |
| 1 | **Proyecto** | 2018-10-15 → 2018-10-13 (-2d) | 2019-12-13 → 2019-12-03 (-10d) | 305d → 297d |
| 2 | **Análisis y Planeación** | 2018-10-15 → 2018-10-13 (-2d) | 2018-12-14 → 2018-12-04 (-10d) | 45d → 37d |
| 3 | Programación estructurada | 2018-10-15 → 2018-10-13 (-2d) | 2018-10-18 → 2018-10-13 (-5d) | 4d → 0d |
| 4 | Levantamiento de información | 2018-10-19 → 2018-10-13 (-6d) | 2018-10-24 → 2018-10-13 (-11d) | 4d → 0d |
| 5 | Aplicación de técnica de levantamiento de información | 2018-10-25 → 2018-10-15 (-10d) | 2018-10-31 → 2018-10-19 (-12d) |  |
| 6 | Análisis de la información | 2018-11-01 → 2018-10-22 (-10d) | 2018-11-07 → 2018-10-26 (-12d) |  |
| 7 | **Componente Metodológico** | 2018-11-08 → 2018-10-29 (-10d) | 2018-12-14 → 2018-12-04 (-10d) |  |
| 8 | Nombre del proyecto | 2018-11-08 → 2018-10-29 (-10d) | 2018-11-13 → 2018-11-01 (-12d) |  |
| 9 | Objetivo General | 2018-11-14 → 2018-11-02 (-12d) | 2018-11-20 → 2018-11-08 (-12d) |  |
| 10 | Objetivo Específicos | 2018-11-21 → 2018-11-09 (-12d) | 2018-11-27 → 2018-11-15 (-12d) |  |
| 11 | Planteamiento del Problema | 2018-11-28 → 2018-11-16 (-12d) | 2018-12-05 → 2018-11-23 (-12d) |  |
| 12 | Alcance del proyecto | 2018-12-06 → 2018-11-26 (-10d) | 2018-12-11 → 2018-11-29 (-12d) |  |
| 13 | Justificación | 2018-12-12 → 2018-11-30 (-12d) | 2018-12-14 → 2018-12-04 (-10d) |  |
| 14 | Receso | 2018-12-17 → 2018-12-05 (-12d) | 2019-02-01 → 2019-01-22 (-10d) |  |
| 15 | **Diseño** | 2019-02-04 → 2019-01-23 (-12d) | 2019-04-12 → 2019-04-02 (-10d) |  |
| 16 | Requerimientos Funcionales | 2019-02-04 → 2019-01-23 (-12d) | 2019-02-08 → 2019-01-29 (-10d) |  |
| 17 | Requerimientos No Funcionales | 2019-02-11 → 2019-01-30 (-12d) | 2019-02-15 → 2019-02-05 (-10d) |  |
| 18 | BPMN | 2019-02-18 → 2019-02-06 (-12d) | 2019-02-22 → 2019-02-12 (-10d) |  |
| 19 | Modelo Entidad Relación | 2019-02-25 → 2019-02-13 (-12d) | 2019-03-01 → 2019-02-19 (-10d) |  |
| 20 | Diagrama de Entidad y Relación | 2019-03-04 → 2019-02-20 (-12d) | 2019-03-15 → 2019-03-05 (-10d) |  |
| 21 | Diagramas UML | 2019-03-18 → 2019-03-06 (-12d) | 2019-03-22 → 2019-03-12 (-10d) |  |
| 22 | Normalización de bases de datos | 2019-03-25 → 2019-03-13 (-12d) | 2019-03-29 → 2019-03-19 (-10d) |  |
| 23 | Prototipos y Mockup | 2019-04-01 → 2019-03-20 (-12d) | 2019-04-12 → 2019-04-02 (-10d) |  |
| 24 | Semana santa | 2019-04-15 → 2019-04-03 (-12d) | 2019-04-29 → 2019-04-17 (-12d) |  |
| 25 | **Desarrollo Etapa 1** | 2019-04-30 → 2019-04-18 (-12d) | 2019-05-30 → 2019-05-20 (-10d) |  |
| 26 | Base de datos | 2019-04-30 → 2019-04-18 (-12d) | 2019-05-07 → 2019-04-25 (-12d) |  |
| 27 | Construcción de la Base de Datos | 2019-05-08 → 2019-04-26 (-12d) | 2019-05-15 → 2019-05-03 (-12d) |  |
| 28 | Datos insertados en la Base de Datos | 2019-05-16 → 2019-05-06 (-10d) | 2019-05-23 → 2019-05-13 (-10d) |  |
| 29 | Consultas y Join en la Base y Datos | 2019-05-24 → 2019-05-14 (-10d) | 2019-05-30 → 2019-05-20 (-10d) |  |
| 30 | Receso | 2019-05-31 → 2019-05-21 (-10d) | 2019-06-28 → 2019-06-18 (-10d) |  |
| 31 | **Desarrollo Etapa 2** | 2019-07-01 → 2019-06-19 (-12d) | 2019-08-09 → 2019-07-30 (-10d) |  |
| 32 | Codificación y CRUD | 2019-07-01 → 2019-06-19 (-12d) | 2019-07-12 → 2019-07-02 (-10d) |  |
| 33 | Conexión de base de datos | 2019-07-15 → 2019-07-03 (-12d) | 2019-07-26 → 2019-07-16 (-10d) |  |
| 34 | CRUD Funcional módulos del sistema | 2019-07-29 → 2019-07-17 (-12d) | 2019-08-09 → 2019-07-30 (-10d) |  |
| 35 | **Prueba de Software** | 2019-08-12 → 2019-07-31 (-12d) | 2019-10-04 → 2019-09-24 (-10d) |  |
| 36 | Prueba de caja negra | 2019-08-12 → 2019-07-31 (-12d) | 2019-08-23 → 2019-08-13 (-10d) |  |
| 37 | prueba de caja blanca | 2019-08-26 → 2019-08-14 (-12d) | 2019-09-06 → 2019-08-27 (-10d) |  |
| 38 | prueba de estrés | 2019-09-09 → 2019-08-28 (-12d) | 2019-09-20 → 2019-09-10 (-10d) |  |
| 39 | prueba de unitaria | 2019-09-23 → 2019-09-11 (-12d) | 2019-10-04 → 2019-09-24 (-10d) |  |
| 40 | **Modelo De Calidad** | 2019-10-07 → 2019-09-25 (-12d) | 2019-12-13 → 2019-12-03 (-10d) |  |
| 41 | Formatos de calidad | 2019-10-07 → 2019-09-25 (-12d) | 2019-10-18 → 2019-10-08 (-10d) |  |
| 42 | Elaboración de contratos | 2019-10-21 → 2019-10-09 (-12d) | 2019-11-01 → 2019-10-22 (-10d) |  |
| 43 | Construcción de calidad de usuario y operación | 2019-11-04 → 2019-10-23 (-12d) | 2019-12-13 → 2019-12-03 (-10d) |  |

## Version 3 (saved 2019-04-30)

Note of the change: Merge branch 'testing' of gitlab.com:tecsisline/tecsisline into testing

Last finish 2019-12-03 → 2019-12-13 (+10d). Complete tasks 0 → 18.

Removed: 14 Receso; 24 Semana santa; 30 Receso

Changed:

| ID | Task | Start | Finish | Duration | Complete | Total float | Predecessors | Other |
| --- | --- | --- | --- | --- | --- | --- | --- | --- |
| 1 | **Proyecto** | 2018-10-13 → 2018-10-15 A (+2d) | 2019-12-03 → 2019-12-13 (+10d) | 297d → 245d | 0% → 39% |  |  |  |
| 2 | **Análisis y Planeación** | 2018-10-13 → 2018-10-15 A (+2d) | 2018-12-04 → 2019-02-05 A (+63d) | 37d → 47d | 0% → 100% | 0d → none |  | resources none → servicios basicos [1 Mensual]; DigitalOcean-Hosting; Dominio-latinoamerica; equipos |
| 3 | Programación estructurada | 2018-10-13 → 2018-10-15 A (+2d) | 2018-10-13 → 2018-10-19 A (+6d) | 0d → 5d | 0% → 100% | 0d → none |  | resources none → Anderson Stiven Yaguma Diaz; Jhostin David Cespedes Campo; Otoniel Hernández Garzon |
| 4 | Levantamiento de información | 2018-10-13 → 2018-10-22 A (+9d) | 2018-10-13 → 2018-10-26 A (+13d) | 0d → 5d | 0% → 100% | 0d → none |  | resources none → Anderson Stiven Yaguma Diaz |
| 5 | Aplicación de técnica de levantamiento de información | 2018-10-15 → 2018-10-29 A (+14d) | 2018-10-19 → 2018-11-02 A (+14d) |  | 0% → 100% | 0d → none |  | resources none → Anderson Stiven Yaguma Diaz; Jhostin David Cespedes Campo; Otoniel Hernández Garzon |
| 6 | Análisis de la información | 2018-10-22 → 2018-11-05 A (+14d) | 2018-10-26 → 2018-11-09 A (+14d) |  | 0% → 100% | 0d → none |  | resources none → Anderson Stiven Yaguma Diaz; Jhostin David Cespedes Campo; Otoniel Hernández Garzon |
| 7 | **Componente Metodológico** | 2018-10-29 → 2018-11-12 A (+14d) | 2018-12-04 → 2019-02-05 A (+63d) |  | 0% → 100% | 0d → none |  |  |
| 8 | Nombre del proyecto | 2018-10-29 → 2018-11-12 A (+14d) | 2018-11-01 → 2018-11-15 A (+14d) |  | 0% → 100% | 0d → none |  | resources none → Anderson Stiven Yaguma Diaz |
| 9 | Objetivo General | 2018-11-02 → 2018-11-16 A (+14d) | 2018-11-08 → 2018-11-22 A (+14d) |  | 0% → 100% | 0d → none |  | resources none → Otoniel Hernández Garzon |
| 10 | Objetivo Específicos | 2018-11-09 → 2018-11-23 A (+14d) | 2018-11-15 → 2018-11-29 A (+14d) |  | 0% → 100% | 0d → none |  | resources none → Otoniel Hernández Garzon |
| 11 | Planteamiento del Problema | 2018-11-16 → 2018-11-30 A (+14d) | 2018-11-23 → 2018-12-06 A (+13d) | 6d → 5d | 0% → 100% | 0d → none |  | resources none → Anderson Stiven Yaguma Diaz; Jhostin David Cespedes Campo |
| 12 | Alcance del proyecto | 2018-11-26 → 2018-12-07 A (+11d) | 2018-11-29 → 2018-12-13 A (+14d) | 4d → 5d | 0% → 100% | 0d → none |  | resources none → Anderson Stiven Yaguma Diaz; Otoniel Hernández Garzon |
| 13 | Justificación | 2018-11-30 → 2018-12-14 A (+14d) | 2018-12-04 → 2019-02-05 A (+63d) |  | 0% → 100% | 0d → none |  | resources none → Anderson Stiven Yaguma Diaz; Jhostin David Cespedes Campo; Otoniel Hernández Garzon |
| 14 | **Diseño** | 2019-01-23 → 2019-02-04 A (+12d) | 2019-04-02 → 2019-04-08 (+6d) | 50d → 45d | 0% → 100% | 0d → none | Receso → none | resources none → servicios basicos [1 Mensual]; equipos [1 Mensual]; DigitalOcean-Hosting [1 Mensual]; Dominio-latinoamerica [1 Mensual] |
| 15 | Requerimientos Funcionales | 2019-01-23 → 2019-02-04 A (+12d) | 2019-01-29 → 2019-02-08 A (+10d) | 5d → 4d | 0% → 100% | 0d → none |  | resources none → Otoniel Hernández Garzon |
| 16 | Requerimientos No Funcionales | 2019-01-30 → 2019-02-11 A (+12d) | 2019-02-05 → 2019-02-18 A (+13d) |  | 0% → 100% | 0d → none |  | resources none → Anderson Stiven Yaguma Diaz; Otoniel Hernández Garzon |
| 17 | BPMN | 2019-02-06 → 2019-02-18 A (+12d) | 2019-02-12 → 2019-02-22 A (+10d) |  | 0% → 100% | 0d → none |  | resources none → Otoniel Hernández Garzon |
| 18 | Modelo Entidad Relación | 2019-02-13 → 2019-02-25 A (+12d) | 2019-02-19 → 2019-03-01 A (+10d) |  | 0% → 100% | 0d → none |  | resources none → Anderson Stiven Yaguma Diaz |
| 19 | Diagrama de Entidad y Relación | 2019-02-20 → 2019-03-04 A (+12d) | 2019-03-05 → 2019-03-15 A (+10d) |  | 0% → 100% | 0d → none |  | resources none → Anderson Stiven Yaguma Diaz; Otoniel Hernández Garzon |
| 20 | Diagramas UML | 2019-03-06 → 2019-03-18 A (+12d) | 2019-03-12 → 2019-03-22 A (+10d) |  | 0% → 100% | 0d → none |  | resources none → Anderson Stiven Yaguma Diaz |
| 21 | Normalización de bases de datos | 2019-03-13 → 2019-03-25 A (+12d) | 2019-03-19 → 2019-03-29 A (+10d) |  | 0% → 100% | 0d → none |  | resources none → Otoniel Hernández Garzon |
| 22 | Prototipos y Mockup | 2019-03-20 → 2019-04-01 A (+12d) | 2019-04-02 → 2019-04-12 A (+10d) |  | 0% → 100% | 0d → none | 21 → none | resources none → Jhostin David Cespedes Campo |
| 23 | **Desarrollo Etapa 1** | 2019-04-18 → 2019-04-22 (+4d) | 2019-05-20 → 2019-05-31 (+11d) | 23d → 30d |  |  | Semana santa → 22 | resources none → servicios basicos [1 Mensual]; DigitalOcean-Hosting [1 Mensual]; Dominio-latinoamerica [1 Mensual]; equipos [1 Mensual] |
| 24 | Base de datos | 2019-04-18 → 2019-04-22 (+4d) | 2019-04-25 → 2019-05-03 (+8d) | 6d → 10d |  |  |  | resources none → Anderson Stiven Yaguma Diaz |
| 25 | Construcción de la Base de Datos | 2019-04-26 → 2019-05-06 (+10d) | 2019-05-03 → 2019-05-17 (+14d) | 6d → 10d |  |  |  | resources none → Otoniel Hernández Garzon; Jhostin David Cespedes Campo |
| 26 | Datos insertados en la Base de Datos | 2019-05-06 → 2019-05-20 (+14d) | 2019-05-13 → 2019-05-24 (+11d) | 6d → 5d |  |  |  | resources none → Anderson Stiven Yaguma Diaz; Otoniel Hernández Garzon |
| 27 | Consultas y Join en la Base y Datos | 2019-05-14 → 2019-05-27 (+13d) | 2019-05-20 → 2019-05-31 (+11d) |  |  |  |  | resources none → Jhostin David Cespedes Campo |
| 28 | **Desarrollo Etapa 2** | 2019-06-19 → 2019-07-01 (+12d) | 2019-07-30 → 2019-08-09 (+10d) |  |  |  | Receso → 27 | resources none → servicios basicos [1 Mensual]; DigitalOcean-Hosting [1 Mensual]; Dominio-latinoamerica [1 Mensual]; equipos [1 Mensual] |
| 29 | Codificación y CRUD | 2019-06-19 → 2019-07-01 (+12d) | 2019-07-02 → 2019-07-12 (+10d) |  |  |  |  |  |
| 30 | Conexión de base de datos | 2019-07-03 → 2019-07-15 (+12d) | 2019-07-16 → 2019-07-26 (+10d) |  |  |  |  |  |
| 31 | CRUD Funcional módulos del sistema | 2019-07-17 → 2019-07-29 (+12d) | 2019-07-30 → 2019-08-09 (+10d) |  |  |  |  |  |
| 32 | **Prueba de Software** | 2019-07-31 → 2019-08-12 (+12d) | 2019-09-24 → 2019-10-04 (+10d) |  |  |  |  | resources none → servicios basicos [1 Mensual]; DigitalOcean-Hosting [1 Mensual]; Dominio-latinoamerica [1 Mensual]; equipos [1 Mensual] |
| 33 | Prueba de caja negra | 2019-07-31 → 2019-08-12 (+12d) | 2019-08-13 → 2019-08-23 (+10d) |  |  |  |  |  |
| 34 | prueba de caja blanca | 2019-08-14 → 2019-08-26 (+12d) | 2019-08-27 → 2019-09-06 (+10d) |  |  |  |  |  |
| 35 | prueba de estrés | 2019-08-28 → 2019-09-09 (+12d) | 2019-09-10 → 2019-09-20 (+10d) |  |  |  |  |  |
| 36 | prueba de unitaria | 2019-09-11 → 2019-09-23 (+12d) | 2019-09-24 → 2019-10-04 (+10d) |  |  |  |  |  |
| 37 | **Modelo De Calidad** | 2019-09-25 → 2019-10-07 (+12d) | 2019-12-03 → 2019-12-13 (+10d) |  |  |  |  | resources none → servicios basicos [1 Mensual]; DigitalOcean-Hosting [1 Mensual]; Dominio-latinoamerica [1 Mensual]; equipos [1 Mensual] |
| 38 | Formatos de calidad | 2019-09-25 → 2019-10-07 (+12d) | 2019-10-08 → 2019-10-18 (+10d) |  |  |  |  |  |
| 39 | Elaboración de contratos | 2019-10-09 → 2019-10-21 (+12d) | 2019-10-22 → 2019-11-01 (+10d) |  |  |  |  |  |
| 40 | Construcción de calidad de usuario y operación | 2019-10-23 → 2019-11-04 (+12d) | 2019-12-03 → 2019-12-13 (+10d) |  |  |  |  |  |

## Version 4 (saved 2019-06-28)

Note of the change: Docs: Se actualiza la carpeta 1-Analisis/5-Diagrama de gantt

Last finish stays 2019-12-13. Complete tasks 18 → 21.

Changed:

| ID | Task | Start | Finish | Complete | Total float |
| --- | --- | --- | --- | --- | --- |
| 1 | **Proyecto** |  |  | 39% → 50% |  |
| 23 | **Desarrollo Etapa 1** | 2019-04-22 A |  | 0% → 92% |  |
| 24 | Base de datos | 2019-04-22 A | 2019-05-03 A | 0% → 100% | 0d → none |
| 25 | Construcción de la Base de Datos | 2019-05-06 A | 2019-05-17 A | 0% → 100% | 0d → none |
| 26 | Datos insertados en la Base de Datos | 2019-05-20 A | 2019-05-24 A | 0% → 100% | 0d → none |
| 27 | Consultas y Join en la Base y Datos | 2019-05-27 A |  | 0% → 50% |  |

## Version 5 (saved 2019-10-30)

Note of the change: Docs: Se agrega soportes de Costos, inventario y cuadrilla de tareas

Last finish 2019-12-13 → 2020-02-21 (+70d). Complete tasks 21 → 22.

Added:

| ID | Task | Duration | Start | Finish | Predecessors | Resources |
| --- | --- | --- | --- | --- | --- | --- |
| 32 | Desarrollo de los prottotipos con html, css y javascript | 20d | 2019-08-12 | 2019-09-06 | 31 | Anderson Stiven Yaguma Diaz; Jhostin David Cespedes Campo; Otoniel Hernández Garzon |
| 33 | Manual tecnico | 10d | 2019-09-09 | 2019-09-20 | 32 | Otoniel Hernández Garzon |
| 34 | Funcianamiento del plataformas | 20d | 2019-09-23 | 2019-10-18 | 33 | Jhostin David Cespedes Campo |

Changed:

| ID | Task | Start | Finish | Duration | Complete | Total float | Predecessors | Other |
| --- | --- | --- | --- | --- | --- | --- | --- | --- |
| 1 | **Proyecto** |  | 2019-12-13 → 2020-02-21 (+70d) | 245d → 295d | 50% → 43% |  |  |  |
| 14 | **Diseño** |  | 2019-04-08 → 2019-04-22 (+14d) | 45d → 49.5d | 100% → 99% |  |  | resources servicios basicos [1 Mensual]; equipos [1 Mensual]; DigitalOcean-Hosting [1 Mensual]; Dominio-latinoamerica [1 Mensual] → servicios basicos [2 Mensual]; equipos [2 Mensual]; DigitalOcean-Hosting [2 Mensual]; Dominio-latinoamerica [2 Mensual] |
| 23 | **Desarrollo Etapa 1** |  | 2019-05-31 A |  | 92% → 100% | 0d → none |  |  |
| 27 | Consultas y Join en la Base y Datos |  | 2019-05-31 A |  | 50% → 100% | 0d → none |  |  |
| 28 | **Desarrollo Etapa 2** |  | 2019-08-09 → 2019-10-18 (+70d) | 30d → 80d |  | 0d → none |  |  |
| 29 | Codificación y CRUD |  |  |  |  |  |  | resources none → Anderson Stiven Yaguma Diaz |
| 30 | Conexión de base de datos |  |  |  |  |  |  | resources none → Otoniel Hernández Garzon |
| 31 | CRUD Funcional módulos del sistema |  |  |  |  |  |  | resources none → Jhostin David Cespedes Campo |
| 35 | **Prueba de Software** | 2019-08-12 → 2019-10-21 (+70d) | 2019-10-04 → 2019-12-13 (+70d) |  |  |  | 31 → 34 |  |
| 36 | Prueba de caja negra | 2019-08-12 → 2019-10-21 (+70d) | 2019-08-23 → 2019-11-01 (+70d) |  |  |  |  | resources none → Jhostin David Cespedes Campo; Otoniel Hernández Garzon |
| 37 | prueba de caja blanca | 2019-08-26 → 2019-11-04 (+70d) | 2019-09-06 → 2019-11-15 (+70d) |  |  |  |  | resources none → Jhostin David Cespedes Campo; Otoniel Hernández Garzon |
| 38 | prueba de estrés | 2019-09-09 → 2019-11-18 (+70d) | 2019-09-20 → 2019-11-29 (+70d) |  |  |  |  | resources none → Jhostin David Cespedes Campo; Otoniel Hernández Garzon |
| 39 | prueba de unitaria | 2019-09-23 → 2019-12-02 (+70d) | 2019-10-04 → 2019-12-13 (+70d) |  |  |  |  | resources none → Jhostin David Cespedes Campo; Otoniel Hernández Garzon |
| 40 | **Modelo De Calidad** | 2019-10-07 → 2019-12-16 (+70d) | 2019-12-13 → 2020-02-21 (+70d) |  |  |  |  |  |
| 41 | Formatos de calidad | 2019-10-07 → 2019-12-16 (+70d) | 2019-10-18 → 2019-12-27 (+70d) |  |  |  |  | resources none → Jhostin David Cespedes Campo |
| 42 | Elaboración de contratos | 2019-10-21 → 2019-12-30 (+70d) | 2019-11-01 → 2020-01-10 (+70d) |  |  |  |  | resources none → Otoniel Hernández Garzon |
| 43 | Construcción de calidad de usuario y operación | 2019-11-04 → 2020-01-13 (+70d) | 2019-12-13 → 2020-02-21 (+70d) |  |  |  |  | resources none → Jhostin David Cespedes Campo |
